# FUFO_PLAN_

Schedule from MS Project, 2012-04-16 to 2012-08-22, A marks actual dates.
Grizli777

## Calendars

- Standard: Mon-Fri 08:00-12:00, 13:00-17:00; Sat-Sun off.

## Resources

| Resource |
| --- |
| Hưng |
| Thắng |
| Nguyên |
| Phong |
| Yến |
| cả nhóm |
| Nguyên. Hưng |

## Schedule

| ID | WBS | Task | Duration | Start | Finish | Predecessors | Complete | Remaining | Total slack | Free slack | Constraint | Resources | Work | Actual work |
| --- | --- | --- | --- | --- | --- | --- | --- | --- | --- | --- | --- | --- | --- | --- |
| 1 | 1 | Công việc của PM | 93d | 2012-04-16 | 2012-08-22 |  |  |  | 0d |  | start no earlier than 2012-04-16 | Phong; Yến | 1488h |  |
| 3 | 2 | **Sub-project FUFO** | 78d | 2012-04-16 A | 2012-08-01 |  | 14% | 67.38d | 15d |  |  |  | 1696h | 168.8h |
| 4 | 2.1 | **FUFO - Giai đoạn 1** | 35d | 2012-04-16 A | 2012-06-01 |  | 27% | 25.6d | 7d | 0d |  |  | 648h | 168.8h |
| 5 | 2.1.1 | Training PID | 5d | 2012-05-14 A | 2012-05-18 |  | 4% | 4.8d | 0d |  | finish no earlier than 2012-05-18 | Hưng | 40h | 1.6h |
| 6 | 2.1.2 | **Test mạch PCB v1** | 22d | 2012-04-20 A | 2012-05-21 |  | 5% | 20.87d | 16d |  |  |  | 312h | 23.2h |
| 7 | 2.1.2.1 | Hàn các linh kiện lên mạch | 1d | 2012-04-20 A | 2012-04-20 |  | 95% | 0.05d | 6d | 0d | start no earlier than 2012-04-20 | Hưng; Thắng | 16h | 15.2h |
| 8 | 2.1.2.2 | Test output PWM trên mạch | 15d | 2012-04-20 A | 2012-05-11 | 7 |  | 15d | 22d |  | finish no earlier than 2012-05-11 | Hưng | 120h |  |
| 9 | 2.1.2.3 | Code hiển thị LCD để debug | 16d | 2012-04-20 A | 2012-05-11 | 7 | 6% | 15d | 6d | 0d | finish no earlier than 2012-05-11 | Thắng | 128h | 8h |
| 10 | 2.1.2.4 | Code và test module bluetooth | 5d | 2012-05-14 | 2012-05-18 | 9 |  |  | 6d | 0d | finish no earlier than 2012-05-18 | Thắng | 40h |  |
| 11 | 2.1.2.5 | Code và test module Sensor | 1d | 2012-05-21 | 2012-05-21 | 10 |  |  | 16d |  |  | Thắng | 8h |  |
| 12 | 2.1.3 | Design PCB v2 | 16d | 2012-04-20 A | 2012-05-11 A |  | 100% |  |  |  |  | Hưng | 128h | 128h |
| 13 | 2.1.4 | Nghiên cứu Quadrotor dynamic | 2d | 2012-04-16 A | 2012-04-17 A |  | 100% |  |  |  |  | Thắng | 16h | 16h |
| 14 | 2.1.5 | Design software cho phần nhúng | 5d | 2012-05-21 | 2012-05-25 | 5, 8 |  |  | 0d |  |  | Hưng | 40h |  |
| 15 | 2.1.6 | Detail design cho chức năng bluetooth | 2d | 2012-05-21 | 2012-05-22 | 10 |  |  | 6d | 0d |  | Thắng | 16h |  |
| 16 | 2.1.7 | Detail design cho chức năng đo độ nghiêng | 2d | 2012-05-23 | 2012-05-24 | 15 |  |  | 6d |  |  | Thắng | 16h |  |
| 17 | 2.1.8 | Tạo bộ test case cho phần embedded | 5d | 2012-05-28 | 2012-06-01 | 14 |  |  | 0d |  |  | Hưng; Thắng | 80h |  |
| 18 | 2.2 | **FUFO - Giai đoạn 2** | 23d | 2012-06-04 | 2012-07-04 | 4 |  |  | 0d |  |  |  | 608h |  |
| 19 | 2.2.1 | **Code phần embedded** | 13d | 2012-06-04 | 2012-06-20 |  |  |  | 0d |  |  |  | 208h |  |
| 20 | 2.2.1.1 | Code PID và khung của toàn bộ software | 10d | 2012-06-04 | 2012-06-15 |  |  |  | 0d |  |  | Hưng | 80h |  |
| 21 | 2.2.1.2 | Code chức năng lấy tín hiệu từ sensor | 8d | 2012-06-04 | 2012-06-13 |  |  |  | 3d | 0d |  | Thắng | 64h |  |
| 22 | 2.2.1.3 | Code chức năng bluetooth | 2d | 2012-06-14 | 2012-06-15 | 21 |  |  | 3d |  |  | Thắng | 16h |  |
| 23 | 2.2.1.4 | Integrate các phần của Hưng và Thắng | 3d | 2012-06-18 | 2012-06-20 | 20 |  |  | 0d |  |  | Hưng; Thắng | 48h |  |
| 24 | 2.2.2 | **Test intergration của phần embedded** | 10d | 2012-06-21 | 2012-07-04 | 19 |  |  | 0d |  |  |  | 400h |  |
| 25 | 2.2.2.1 | Test trên máy bay | 10d | 2012-06-21 | 2012-07-04 |  |  |  | 0d |  |  | Nguyên; Phong; Yến | 240h |  |
| 26 | 2.2.2.2 | Sửa lại những gì chưa đúng | 10d | 2012-06-21 | 2012-07-04 |  |  |  | 0d |  |  | Hưng; Thắng | 160h |  |

Notes:
- 1: output: / - SRS, tài liệu nói chung. / - Review mọi phần việc của mọi thành viên cùng với Yến / - tổ chức họp nhóm và các hoạt động thuộc lĩnh vực management.
- 4: Milestone 1: "Trước khi cất cánh" / Milestone nŕy lŕ nhằm chuẩn bị tất cả những gì cần thiết cho việc lŕm máy bay bay được. / - Hoŕn thŕnh report 1,2 của đồ án / - Hoŕn thŕnh các demo tręn mạch PCB của FUFO, test thŕnh công./ - Traing TCP tręn java cho Yến / - Lŕm xong bộ test case. / - Lŕm xong tŕi liệu SRS. / - Lŕm xong system design / - Lŕm xong architechture design của VP vŕ FUFO / - Lŕm xong detail design của từng phần / - Code phần nhận vŕ hiển thị video tręn PC của VP/ - Hoŕn thiện mô hěnh bay vŕ sẵn sŕng có thể cất cánh.
- 5: Output của việc training lŕ: / - report về những thứ training được, report chỉ cần thể hiện lŕ Hưng đă hiểu PID lŕ gě vŕ đưa nó vŕo kiến trúc phần mềm như nŕo. / Việc nŕy có thể cần nhiều hơn 2 ngŕy, nhưng mŕ vě nó lŕ cuối tuần nęn thứ 7 vŕ chủ nhật sẽ lŕ buffer cho Hưng tha hồ mŕ hoŕnh hŕnh :))
- 6: PCB v1 đă thiết kế từ trước khi lŕm đồ án để nhằm mục đích prototype
- 7: Hôm nŕy Phong, Hưng, Thắng sẽ có một chuyến đi tới phňng lab thầy Hůng để xin thầy hướng dẫn cách hŕn linh kiện. Đồng thời hŕn luôn. (welcome Nguyęn vŕ Yến đi cůng để xem :D)
- 8: Hưng dựa vŕo cái demo PWM để test xem việc output PWM có đúng không với tất cả các chân ra PWM tręn mạch.
- 9: Code một function đơn giản để hiển thị ra ngoŕi LCD. Function nŕy khi nŕo ko důng thě comment nó đi lŕ được.
- 10: Code một program đơn giản để test chức năng bluetooth tręn mạch
- 13: output lŕ: / - Report cho Phong vŕ Hưng có thể hiểu được input vŕo động cơ như nŕo thě tạo ra hiệu ứng ra sao. Input bao nhięu thì đủ. / - Ko cần report formal, chỉ cần đủ để hiểu được muốn cân bằng động thě phải lŕm gě
- 14: Output: / - Architecture design / - Statechart nếu cần / - use case / - functional design (Chi tiết từng function, từng class)
- 15: Output của cái nŕy sẽ giúp Hưng lŕm detail design cho toŕn bộ embedded software trong tuần sau. / Cần: / - Chi tiết từng class, từng function của phần nŕy. / - Nęn có giả mă (sudo code) để sau nŕy code cho dễ vŕ Hưng hiểu được phần nŕy để đưa vŕo design chung.
- 16: Chức năng nŕy lấy input từ sensor vŕ output ra độ nghięng để lŕm input cho function điều khiển động cơ của Hưng. / Nếu Thắng nắm được input từ sensor như nŕo rồi thě viết mă giả (sudo code) về thuật toán tính toán độ nghięng luôn lŕ tốt nhất, để Hưng có thể dễ dŕng tưởng tượng ra input của function điều khiển động cơ lŕ gě. / Yęu cầu của phần nŕy: / - Design chi tiết mức class vŕ function của phần nŕy.
- 17: Cái nŕy khá lŕ chán, nhưng vẫn phải lŕm trước khi code để tránh rủi ro. / Output: / - Functional test case / - Integration test case / Chủ yếu phần nŕy lŕ Hưng lŕm, vě Hưng design, Thắng sẽ support bằng cách cůng Hưng brain storm. / Phong vŕ Yến sẽ review cũng như cố vấn.
- 18: Làm các report tiếp theo của đồ án. / - Code hoàn chỉnh phần embedded / - Test phần embedded dựa theo các test case, bao gồm cả tiến hành bay thử Quadrotor / - Test phần code của VP trên PC dựa theo các test case/ - Code hoàn chỉnh phần VP trên Android
- 20: Yêu cầu: / - code dựa trên design, có thay đổi gì thì inform cả team FUFO để mọi người cùng biết / - Trong code này nếu được th́ implement luôn cả cân bằng động nhé.
- 21: Yêu cầu: / - Code dựa trên design, nếu có thay đổi thì cần inform cả team FUFO để biết / - Phần này khó, nên nhớ test tiếc đầy đủ nhá
- 22: YĘu cầu: / - Dựa tręn design, nếu thay đổi thě inform cả nhóm. / Phần nŕy chắc ko có nhiều thay đổi so với cái demo đă từng lŕm, nęn sẽ code nhanh
- 23: Phần này Hưng add các function do thắng viết vào code của Hưng, sau đó test kỹ lại xem có chạy đúng ko. Thắng sẽ tư vấn và sửa lại function nếu thấy có gì đó chưa đúng. / Phần này sẽ ứng dụng các functional test case
- 25: Cả Hưng và Thắng cùng phụ trách phần test này, Phong sẽ support khi cần. / phần điều khiển qua bluetooth sẽ sử dụng cái demo trước đó của Thắng / Áp dụng integration test case
- 26: Chỗ nŕo chưa hợp lý thě sửa

| ID | WBS | Task | Duration | Start | Finish | Predecessors | Complete | Remaining | Total slack | Free slack | Constraint | Resources | Work | Actual work |
| --- | --- | --- | --- | --- | --- | --- | --- | --- | --- | --- | --- | --- | --- | --- |
| 27 | 2.3 | **FUFO - Giai đoạn 3** | 15d | 2012-07-05 | 2012-07-25 | 18 |  |  | 0d |  |  |  | 360h |  |
| 28 | 2.3.1 | Thiết kế mô hình của quadrotor version 2 | 5d | 2012-07-05 | 2012-07-11 |  |  |  | 0d |  |  | Thắng | 40h |  |
| 29 | 2.3.2 | Code chức năng cân bằng động | 10d | 2012-07-05 | 2012-07-18 |  |  |  | 5d |  |  | Hưng | 80h |  |
| 30 | 2.3.3 | Intergration test Quadrotor version 2 | 10d | 2012-07-12 | 2012-07-25 | 28 |  |  | 0d |  |  | Thắng; Hưng; Nguyên | 240h |  |
| 31 | 2.4 | **FUFO - Giai đoạn 4** | 5d | 2012-07-26 | 2012-08-01 | 27 |  |  | 15d |  |  |  | 80h |  |
| 32 | 2.4.1 | Hoàn thiện báo cáo về khả năng bay của Quadrotor version 2 | 5d | 2012-07-26 | 2012-08-01 |  |  |  | 15d |  |  | Hưng; Thắng | 80h |  |
| 34 | 3 | **Sub-project VP** | 83d | 2012-04-16 A | 2012-08-08 |  | 16% | 69.87d | 10d |  |  |  | 1304h | 162h |
| 35 | 3.1 | Detail design cho VP | 5d | 2012-04-16 A | 2012-04-20 A |  | 100% |  |  |  |  | Nguyên | 40h | 40h |
| 36 | 3.2 | Tạo bộ test case cho VP | 5d | 2012-04-23 A | 2012-04-27 | 35 | 20% | 4d | 83d |  |  | Yến | 40h | 8h |
| 37 | 3.3 | code giao diện VP trên PC dựa theo design trước đó | 15d | 2012-04-23 A | 2012-05-11 | 35 | 35% | 9.75d | 20.67d | 0d |  | Nguyên | 120h | 42h |
| 38 | 3.4 | Test phần giao diện nhận ảnh trên PC dựa theo test case | 3d | 2012-05-14 | 2012-05-16 | 37 |  |  | 70d |  |  | Yến | 24h |  |
| 39 | 3.5 | training TCP/IP in java | 5d | 2012-04-16 A | 2012-04-20 A |  | 100% |  |  |  | finish no earlier than 2012-04-20 | Yến | 40h | 40h |
| 40 | 3.6 | **Code android** | 10d | 2012-05-14 A | 2012-05-25 | 37 | 27% | 7.33d | 18d | 0d |  |  | 120h | 32h |
| 41 | 3.6.1 | Code ứng dụng truyền camera qua UDP | 5d | 2012-05-14 A | 2012-05-18 |  | 80% | 1d | 18d | 0d |  | Nguyên | 40h | 32h |
| 42 | 3.6.2 | Code chức năng điều khiển bằng bluetooth | 5d | 2012-05-21 | 2012-05-25 | 41 |  |  | 18d |  |  | Nguyên | 40h |  |
| 43 | 3.6.3 | Code chức năng truyền TCP/IP | 5d | 2012-05-21 | 2012-05-25 | 41 |  |  | 18d |  |  | Yến | 40h |  |
| 44 | 3.7 | Test integration của VP | 5d | 2012-05-28 | 2012-06-01 | 40 |  |  | 18d | 0d |  | Yến | 40h |  |
| 45 | 3.8 | Test integration với FUFO | 35d | 2012-06-21 | 2012-08-08 | 19 |  |  | 10d |  |  | Thắng; Hưng | 560h |  |
| 46 | 3.9 | Tiến hành cải tiến truyền video | 30d | 2012-06-04 | 2012-07-13 | 44 |  |  | 18d | 0d |  | Nguyên | 240h |  |
| 47 | 3.10 | Hoàn thiện báo cáo về truyền video real-time | 10d | 2012-07-16 | 2012-07-27 | 46 |  |  | 18d |  |  | Nguyên | 80h |  |
| 49 | 4 | hoàn thiện tài liệu tốt nghiệp | 10d | 2012-07-26 | 2012-08-08 | 27 |  |  | 0d |  |  | cả nhóm | 80h |  |
| 51 | 5 | "buffer time!" | 10d | 2012-08-09 | 2012-08-22 | 49 |  |  | 0d |  | finish no earlier than 2012-08-22 | cả nhóm | 80h |  |

Notes:
- 27: Phần này sẽ bắt đầu khi quadrotor ver1 đă bay được, và điều khiển được. / Trong phần này: / - Quadrotor sẽ được nâng cấp về phần khung để có thể mang được điện thoại. / - Quadrotor sẽ được hoàn chỉnh khả năng thăng bằng động nếu không có tín hiệu điều khiển. / - VP sẽ bước vào giai đoạn cải tiến.
- 28: Thắng phụ trách phần nŕy, nhưng mọi người ai cũng đều được tham gia
- 29: Chức năng nŕy có thể đă có trong version trước, nhưng vẫn nęn tận dụng thời gian nŕy để hoŕn chỉnh nó
- 30: Phần này sẽ là test bộ khung mới của quadrotor với các chức năng như cân bằng động, truyền nhận tín hiệu, PWM. Nói chung là dựa theo test case. / Nếu cần có thể đặt điện thoại hoặc một vật nặng tương đương lên để test khả năng mang vác. / Ứng dụng integration test case của FUFO
- 31: Hoŕn thŕnh tất cả các report / Hoŕn thŕnh tất cả các tŕi liệu đi kčm / Hoŕn thŕnh việc test vŕ lấy dữ liệu từ các sản phẩm
- 32: output: / - Một bản báo cáo về khả năng bay của quadrotor một cách khoa học, có số liệu thống kę được hiển thị dễ hiểu dưới dạng hěnh ảnh, biểu đồ bằng matlab
- 35: Output gồm: / - Architecture design / - Use case / - Time line / - functional design
- 36: Dựa trên design để thiết kế toàn bộ test case cho VP. / - Chủ yếu là integration test và function test / - Các unit test tự coder làm / Yến làm và Nguyên support. Phần này chỉ là IS nên ko có gì khó với Yến cả
- 37: Design ra sao thě code như thế nhé, nếu mŕ trong quá trěnh code cần thay đổi lại design thě chỉ cần inform tớ trước lŕ được.
- 38: Cứ dựa theo test case để test lŕ được
- 39: output lŕ 1 chương trěnh như Phong đă mô tả với Yến.
- 41: integrate cái function nŕy vŕo ứng dụng bluetooth, dựa theo thiết kế có trước.
- 42: Ứng dụng này phải được code y như thiết kế. / Nguyên tham khảo code của Thắng nhé
- 43: đưa chức năng truyền vŕ nhận các ký tự qua TCP/IP vŕo trong ứng dụng camera / Hint: Yến có 5 ngŕy để code, nhưng chỉ nęn code trong 3 ngŕy, 2 ngŕy cňn lại để đưa vŕo VP xem có vấn đề gě không
- 44: Mục tiêu là test xem hoạt động của VP và TCP có ổn định không. / Các chức năng được code có cùng hoạt động tốt không, dựa trên Integration test case của VP / Phần này cần sự kết hợp giữa FUFO và VP và cũng là phần kéo dài nhất.
- 45: Test xem phần bluetooth có hoạt động với phiên bản biết bay của FUFO không. / Do phần này Nguyên code nên Thắng sẽ test. / Áp dụng integration test case của FUFO
- 46: Phần cải tiến này sẽ cụ thể như nào th́ đến lúc đó bàn và lập plan sau. / Chủ yếu là cải tiến về phần hiển thị h́nh ảnh
- 47: output: / Báo cáo với các số liệu thống kę đầy đủ, khoa học về truyền video real-time, số liệu phải được trěnh bŕy bằng biểu đồ tręn matlab
- 49: Tài liệu gồm design, báo cáo, demo, linh tinh beng... sao cho đủ 300 trang / Slide, chuẩn bị thuyết tŕnh .v..v. / Sau giai đoạn 3 của FUFO là có thể tiến hành làm cái này
- 51: Thời gian nŕy lŕ dŕnh cho việc chậm trễ của toŕn bộ đồ án, hạn chót lŕ ngŕy kết thúc của block 5 học kỳ summer.
